# Proyect1

Schedule from MS Project, 2013-08-28 to 2014-05-27, costs in $, A marks actual dates.
Hewlett-Packard

## Calendars

- Estándar: Mon-Fri 09:00-13:00, 15:00-19:00; Sat-Sun off.

## Resources

| Resource |
| --- |
| Paulo Caceres |
| Juan Vicente |
| Gustavo Heindl |
| Emiliano Prieto |
| Esteban Martinez |
| Damian Lopez |

## Schedule

| ID | WBS | Task | Type | Duration | Start | Finish | Predecessors | Complete | Remaining | Total slack | Free slack | Constraint | Resources | Work | Cost |
| --- | --- | --- | --- | --- | --- | --- | --- | --- | --- | --- | --- | --- | --- | --- | --- |
| 1 | 1 | **Planificacion** |  | 11d | 2013-08-28 A | 2013-09-11 |  |  | 11d | 134d |  |  |  | 88h | 8,140 |
| 2 | 1.1 | Brief |  | 4d | 2013-08-28 | 2013-09-02 |  |  |  | 134d | 0d | start no earlier than 2013-08-28 | Damian Lopez | 32h | 3,520 |
| 3 | 1.2 | WBS |  | 4d | 2013-09-03 | 2013-09-06 | 2 |  |  | 134d | 0d |  | Esteban Martinez | 32h | 2,400 |
| 4 | 1.3 | Gantt |  | 3d | 2013-09-09 | 2013-09-11 | 3 |  |  | 134d | 0d |  | Paulo Caceres [50%]; Damian Lopez [50%] | 24h | 2,220 |
| 5 | 1.4 | Entrega del Plan de Proyecto | milestone | 0d | 2013-09-11 A | 2013-09-11 A |  | 100% |  |  |  | finish no earlier than 2013-09-11 |  |  |  |
| 6 | 2 | **Analisis y Diseño** |  | 50d | 2013-09-12 | 2013-11-20 | 4 |  |  | 134d |  |  |  | 240h | 19,120 |
| 7 | 2.1 | **Analisis** |  | 30d | 2013-09-12 | 2013-10-23 |  |  |  | 134d | 0d |  |  | 240h | 19,120 |
| 8 | 2.1.1 | Relevamiento de requisitos |  | 4d | 2013-09-12 | 2013-09-17 |  |  |  | 134d | 0d |  | Damian Lopez | 32h | 3,520 |
| 9 | 2.1.2 | Modelo de Dominio de negocio |  | 2d | 2013-09-18 | 2013-09-19 | 8 |  |  | 134d | 0d |  | Juan Vicente [50%]; Esteban Martinez [50%] | 16h | 1,200 |
| 10 | 2.1.3 | Especificación de requisitos |  | 24d | 2013-09-20 | 2013-10-23 | 9 |  |  | 134d |  |  | Esteban Martinez [50%]; Paulo Caceres [50%] | 192h | 14,400 |
| 11 | 2.1.4 | Informe de Avance | milestone | 0d | 2013-10-02 | 2013-10-02 |  |  |  | 127d |  | start no earlier than 2013-10-02 |  |  |  |
| 12 | 2.1.5 | Entrega de Documentacion de Analisis | milestone | 0d | 2013-10-23 | 2013-10-23 |  |  |  | 112d |  | start no earlier than 2013-10-23 |  |  |  |
| 13 | 2.2 | **Diseño** |  | 20d | 2013-10-24 | 2013-11-20 | 7 |  |  | 134d |  |  |  |  |  |
| 14 | 2.2.1 | Modelo de Arquitectura |  | 4d | 2013-10-24 | 2013-10-29 |  |  |  | 108d |  |  |  |  |  |
| 15 | 2.2.2 | DER |  | 3d | 2013-10-24 | 2013-10-28 |  |  |  | 109d |  |  |  |  |  |
| 16 | 2.2.3 | Documentación técnica |  | 20d | 2013-10-24 | 2013-11-20 |  |  |  | 92d |  |  |  |  |  |
| 17 | 2.2.4 | Informe de avance | milestone | 0d | 2013-11-06 | 2013-11-06 |  |  |  | 145d |  | start no earlier than 2013-11-06 |  |  |  |
| 18 | 2.2.5 | Entrega de documentación de Diseño | milestone | 0d | 2013-11-20 | 2013-11-20 |  |  |  | 93d |  | start no earlier than 2013-11-20 |  |  |  |
| 19 | 3 | Desarrollo |  | 26.25d | 2014-02-20 | 2014-03-28 |  |  |  | 0d |  | finish no earlier than 2014-03-28 |  |  |  |
| 20 | 4 | **Registro** |  | 45d | 2013-11-04 | 2014-01-03 |  |  |  | 30d |  |  |  |  |  |
| 21 | 4.1 | ABM Perfil |  | 20d | 2013-11-04 | 2013-11-29 |  |  |  | 40d | 10d | start no earlier than 2013-11-04 |  |  |  |
| 22 | 4.2 | ALTA Historial |  | 15d | 2013-12-16 | 2014-01-03 | 21 |  |  | 30d | 20d | start no earlier than 2013-12-16 |  |  |  |
| 23 | 5 | **Gestion de registros** |  | 30d | 2014-02-03 | 2014-03-14 |  |  |  | 10d |  |  |  |  |  |
| 24 | 5.1 | Aprobacion registro |  | 15d | 2014-02-03 | 2014-02-21 | 22 |  |  | 10d | 0d | start no earlier than 2014-02-03 |  |  |  |
| 25 | 5.2 | Aprobacion historial |  | 15d | 2014-02-24 | 2014-03-14 | 24 |  |  | 10d |  |  |  |  |  |

| ID | WBS | Task | Duration | Start | Finish | Predecessors | Total slack | Free slack | Constraint |
| --- | --- | --- | --- | --- | --- | --- | --- | --- | --- |
| 26 | 6 | **Inscripciones** | 55d | 2013-11-04 | 2014-01-17 |  | 20d |  |  |
| 27 | 6.1 | Cursos de gestion | 20d | 2013-11-04 | 2013-11-29 |  | 30d | 10d | start no earlier than 2013-11-04 |
| 28 | 6.2 | Cursos de jovenes | 15d | 2013-12-16 | 2014-01-03 | 27 | 20d | 0d | start no earlier than 2013-12-16 |
| 29 | 6.3 | Capacitacion continua | 10d | 2014-01-06 | 2014-01-17 | 28 | 20d |  |  |
| 30 | 7 | **Administracion cursos** | 30d | 2014-02-17 | 2014-03-28 |  | 35d |  |  |
| 31 | 7.1 | Aprobacion de cursos | 15d | 2014-02-17 | 2014-03-07 | 29 | 35d | 0d | start no earlier than 2014-02-17 |
| 32 | 7.2 | ABM cursos | 15d | 2014-03-10 | 2014-03-28 | 31 | 35d |  |  |
| 33 | 8 | **Consultas** | 51d | 2013-11-04 | 2014-01-13 |  | 23d |  |  |
| 34 | 8.1 | Cursos por persona | 7d | 2013-11-04 | 2013-11-12 |  | 33d | 0d | start no earlier than 2013-11-04 |
| 35 | 8.2 | Cursos por grupo | 7d | 2013-11-13 | 2013-11-21 | 34 | 33d | 0d |  |
| 36 | 8.3 | Cursos por zona | 7d | 2013-11-22 | 2013-12-02 | 35 | 33d | 10d |  |
| 37 | 8.4 | Inscriptos a curso | 5d | 2013-12-17 | 2013-12-23 | 36 | 23d | 0d | start no earlier than 2013-12-17 |
| 38 | 8.5 | Historial de inscriptos | 5d | 2013-12-24 | 2013-12-30 | 37 | 23d | 0d |  |
| 39 | 8.6 | Datos de persona | 5d | 2013-12-31 | 2014-01-06 | 38 | 23d | 0d |  |
| 40 | 8.7 | Historial persona por grupo | 5d | 2014-01-07 | 2014-01-13 | 39 | 23d | 0d |  |
| 41 | 9 | **Administracion** | 51d | 2014-01-14 | 2014-03-25 |  | 38d |  |  |
| 42 | 9.1 | Responsable de zona | 7d | 2014-01-14 | 2014-01-22 | 40 | 23d | 0d |  |
| 43 | 9.2 | Responsablede distrito | 7d | 2014-01-23 | 2014-01-31 | 42 | 23d | 0d |  |
| 44 | 9.3 | Responsable de grupo | 7d | 2014-02-03 | 2014-02-11 | 43 | 23d | 20d |  |
| 45 | 9.4 | Director de curso | 5d | 2014-03-12 | 2014-03-18 | 44 | 38d | 0d | start no earlier than 2014-03-12 |
| 46 | 9.5 | Baja perfil | 5d | 2014-03-19 | 2014-03-25 | 45 | 38d |  |  |
| 47 | 10 | **Testing** | 35d | 2014-03-31 | 2014-05-16 | 19 | 0d |  |  |
| 48 | 10.1 | Generar casos de prueba | 20d | 2014-03-31 | 2014-04-25 |  | 0d |  |  |
| 49 | 10.2 | Preparar ambiebte de prueba | 5d | 2014-04-28 | 2014-05-02 | 48 | 0d |  |  |
| 50 | 10.3 | Ejecutar casos de prueba | 10d | 2014-05-05 | 2014-05-16 | 49 | 0d |  |  |

| ID | WBS | Task | Duration | Start | Finish | Predecessors | Total slack |
| --- | --- | --- | --- | --- | --- | --- | --- |
| 51 | 11 | **Implementación** | 7d | 2014-05-19 | 2014-05-27 | 47 | 0d |
| 52 | 11.1 | Configuracion de Hardware y Software de Base | 2d | 2014-05-19 | 2014-05-20 |  | 0d |
| 53 | 11.2 | Puesta en produccion | 1d | 2014-05-21 | 2014-05-21 | 52 | 0d |
| 54 | 11.3 | Seguimiento | 4d | 2014-05-22 | 2014-05-27 | 53 | 0d |
